# Two-storey detached house, Harrogate

| id | name | wbs_id | calendar_id | type | duration_hours | constraint | status | percent_complete | early_start | early_finish | late_start | late_finish | total_float_hours | free_float_hours | constraint_date | notes |
| --- | --- | --- | --- | --- | --- | --- | --- | --- | --- | --- | --- | --- | --- | --- | --- | --- |
| A1000 | Start on site | 1 | standard | start_milestone | 0.0 | none | not_started | 0.0 | 2026-03-02T08:00:00 | 2026-03-02T08:00:00 | 2026-04-07T16:00:00 | 2026-04-07T16:00:00 | 200.0 | 0.0 |  |  |
| A1010 | Site set-up, welfare and hoarding | 1 | standard | task | 40.0 | none | not_started | 0.0 | 2026-03-02T08:00:00 | 2026-03-06T16:00:00 | 2026-04-08T08:00:00 | 2026-04-14T16:00:00 | 200.0 | 0.0 |  |  |
| A1020 | Service diversions and temporary supplies | 1 | standard | task | 80.0 | none | not_started | 0.0 | 2026-03-02T08:00:00 | 2026-03-13T16:00:00 | 2026-04-16T08:00:00 | 2026-04-29T16:00:00 | 248.0 | 0.0 |  |  |
| A1030 | Strip topsoil and reduce levels | 1 | standard | task | 32.0 | none | not_started | 0.0 | 2026-03-09T08:00:00 | 2026-03-12T16:00:00 | 2026-04-15T08:00:00 | 2026-04-20T16:00:00 | 200.0 | 8.0 |  |  |
| A1100 | Set out and excavate strip foundations | 2 | standard | task | 48.0 | start_on_or_after | not_started | 0.0 | 2026-03-16T08:00:00 | 2026-03-23T16:00:00 | 2026-04-21T08:00:00 | 2026-04-28T16:00:00 | 192.0 | 0.0 | 2026-03-16T08:00:00 | Constraint: Planning condition 4 (construction management plan) discharged 13 March |
| A1110 | Building control inspection - foundations | 2 | standard | task | 8.0 | none | not_started | 0.0 | 2026-03-24T08:00:00 | 2026-03-24T16:00:00 | 2026-04-29T08:00:00 | 2026-04-29T16:00:00 | 192.0 | 0.0 |  |  |
| A1120 | Pour foundation concrete | 2 | standard | task | 16.0 | none | not_started | 0.0 | 2026-03-25T08:00:00 | 2026-03-26T16:00:00 | 2026-04-30T08:00:00 | 2026-05-01T16:00:00 | 192.0 | 0.0 |  |  |
| A1130 | Concrete cure | 2 | seven_day | task | 24.0 | none | not_started | 0.0 | 2026-03-27T08:00:00 | 2026-03-29T16:00:00 | 2026-05-02T08:00:00 | 2026-05-04T16:00:00 | 288.0 | 0.0 |  |  |
| A1140 | Blockwork to DPC | 2 | standard | task | 48.0 | none | not_started | 0.0 | 2026-03-30T08:00:00 | 2026-04-08T16:00:00 | 2026-05-05T08:00:00 | 2026-05-12T16:00:00 | 184.0 | 0.0 |  |  |
| A1150 | Below-ground drainage | 2 | standard | task | 64.0 | none | not_started | 0.0 | 2026-03-16T08:00:00 | 2026-03-25T16:00:00 | 2026-04-30T08:00:00 | 2026-05-12T16:00:00 | 248.0 | 64.0 |  |  |
| A1160 | Oversite, DPM, insulation and ground floor slab | 2 | standard | task | 40.0 | none | not_started | 0.0 | 2026-04-09T08:00:00 | 2026-04-15T16:00:00 | 2026-05-13T08:00:00 | 2026-05-19T16:00:00 | 184.0 | 0.0 |  |  |
| A1170 | Substructure complete | 2 | standard | finish_milestone | 0.0 | none | not_started | 0.0 | 2026-04-15T16:00:00 | 2026-04-15T16:00:00 | 2026-05-19T16:00:00 | 2026-05-19T16:00:00 | 184.0 | 0.0 |  |  |
| A1200 | Scaffold lift 1 | 3 | standard | task | 16.0 | none | not_started | 0.0 | 2026-04-16T08:00:00 | 2026-04-17T16:00:00 | 2026-05-20T08:00:00 | 2026-05-21T16:00:00 | 184.0 | 0.0 |  |  |
| A1210 | Brick and block to first floor | 3 | standard | task | 120.0 | none | not_started | 0.0 | 2026-04-20T08:00:00 | 2026-05-11T16:00:00 | 2026-05-22T08:00:00 | 2026-06-12T16:00:00 | 184.0 | 0.0 |  |  |
| A1220 | First floor joists and decking | 3 | standard | task | 32.0 | none | not_started | 0.0 | 2026-05-12T08:00:00 | 2026-05-15T16:00:00 | 2026-06-15T08:00:00 | 2026-06-18T16:00:00 | 184.0 | 0.0 |  |  |
| A1230 | Scaffold lift 2 | 3 | standard | task | 16.0 | none | not_started | 0.0 | 2026-05-18T08:00:00 | 2026-05-19T16:00:00 | 2026-06-19T08:00:00 | 2026-06-22T16:00:00 | 184.0 | 0.0 |  |  |
| A1240 | Brick and block to wall plate | 3 | standard | task | 120.0 | none | not_started | 0.0 | 2026-05-20T08:00:00 | 2026-06-10T16:00:00 | 2026-06-23T08:00:00 | 2026-07-13T16:00:00 | 184.0 | 0.0 |  |  |
| A1250 | Roof trusses and bracing | 3 | standard | task | 40.0 | none | not_started | 0.0 | 2026-06-11T08:00:00 | 2026-06-17T16:00:00 | 2026-07-14T08:00:00 | 2026-07-20T16:00:00 | 184.0 | 0.0 |  |  |
| A1260 | Felt, batten and tile roof | 3 | standard | task | 64.0 | none | not_started | 0.0 | 2026-06-18T08:00:00 | 2026-06-29T16:00:00 | 2026-07-21T08:00:00 | 2026-07-30T16:00:00 | 184.0 | 0.0 |  |  |
| A1270 | Fascias, soffits and rainwater goods | 3 | standard | task | 32.0 | none | not_started | 0.0 | 2026-06-30T08:00:00 | 2026-07-03T16:00:00 | 2026-09-25T08:00:00 | 2026-09-30T16:00:00 | 496.0 | 0.0 |  |  |
| A1280 | Windows and external doors | 3 | standard | task | 32.0 | none | not_started | 0.0 | 2026-06-11T08:00:00 | 2026-06-16T16:00:00 | 2026-07-27T08:00:00 | 2026-07-30T16:00:00 | 256.0 | 72.0 |  |  |
| A1290 | Watertight | 3 | standard | finish_milestone | 0.0 | none | not_started | 0.0 | 2026-06-29T16:00:00 | 2026-06-29T16:00:00 | 2026-07-30T16:00:00 | 2026-07-30T16:00:00 | 184.0 | 0.0 |  |  |
| A1300 | Strike scaffold | 3 | standard | task | 16.0 | none | not_started | 0.0 | 2026-07-06T08:00:00 | 2026-07-07T16:00:00 | 2026-10-01T08:00:00 | 2026-10-02T16:00:00 | 496.0 | 0.0 |  |  |
| A1400 | First fix carpentry (studwork, door linings) | 4 | standard | task | 64.0 | none | not_started | 0.0 | 2026-06-30T08:00:00 | 2026-07-09T16:00:00 | 2026-07-31T08:00:00 | 2026-08-11T16:00:00 | 184.0 | 0.0 |  |  |
| A1410 | First fix electrics | 4 | standard | task | 48.0 | none | not_started | 0.0 | 2026-07-03T08:00:00 | 2026-07-10T16:00:00 | 2026-08-05T08:00:00 | 2026-08-12T16:00:00 | 184.0 | 0.0 |  |  |
| A1420 | First fix plumbing and heating | 4 | standard | task | 48.0 | none | not_started | 0.0 | 2026-07-03T08:00:00 | 2026-07-10T16:00:00 | 2026-08-05T08:00:00 | 2026-08-12T16:00:00 | 184.0 | 0.0 |  |  |
| A1430 | Insulation and vapour control | 4 | standard | task | 32.0 | none | not_started | 0.0 | 2026-07-13T08:00:00 | 2026-07-16T16:00:00 | 2026-08-13T08:00:00 | 2026-08-18T16:00:00 | 184.0 | 0.0 |  |  |
| A1440 | Plasterboard and skim | 4 | standard | task | 96.0 | none | not_started | 0.0 | 2026-07-17T08:00:00 | 2026-08-03T16:00:00 | 2026-08-19T08:00:00 | 2026-09-04T16:00:00 | 184.0 | 0.0 |  |  |
| A1450 | Drying out | 4 | seven_day | task | 56.0 | none | not_started | 0.0 | 2026-08-04T08:00:00 | 2026-08-10T16:00:00 | 2026-09-07T08:00:00 | 2026-09-13T16:00:00 | 272.0 | 0.0 |  |  |
| A1460 | Screed ground floor | 4 | standard | task | 16.0 | none | not_started | 0.0 | 2026-08-04T08:00:00 | 2026-08-05T16:00:00 | 2026-09-10T08:00:00 | 2026-09-11T16:00:00 | 208.0 | 24.0 |  |  |
| A1470 | Second fix carpentry (doors, skirting, stairs) | 4 | standard | task | 64.0 | none | not_started | 0.0 | 2026-08-11T08:00:00 | 2026-08-20T16:00:00 | 2026-09-14T08:00:00 | 2026-09-23T16:00:00 | 184.0 | 0.0 |  |  |
| A1480 | Second fix electrics | 4 | standard | task | 40.0 | none | not_started | 0.0 | 2026-08-13T08:00:00 | 2026-08-19T16:00:00 | 2026-10-01T08:00:00 | 2026-10-07T16:00:00 | 272.0 | 8.0 |  |  |
| A1490 | Second fix plumbing, sanitaryware and boiler | 4 | standard | task | 48.0 | none | not_started | 0.0 | 2026-08-13T08:00:00 | 2026-08-20T16:00:00 | 2026-09-23T08:00:00 | 2026-09-30T16:00:00 | 224.0 | 0.0 |  |  |
| A1500 | Kitchen installation | 4 | standard | task | 40.0 | none | not_started | 0.0 | 2026-08-21T08:00:00 | 2026-08-27T16:00:00 | 2026-09-24T08:00:00 | 2026-09-30T16:00:00 | 184.0 | 0.0 |  |  |
| A1510 | Tiling | 4 | standard | task | 40.0 | none | not_started | 0.0 | 2026-08-28T08:00:00 | 2026-09-04T16:00:00 | 2026-10-01T08:00:00 | 2026-10-07T16:00:00 | 184.0 | 0.0 |  |  |
| A1520 | Decoration | 4 | standard | task | 64.0 | none | not_started | 0.0 | 2026-09-07T08:00:00 | 2026-09-16T16:00:00 | 2026-10-08T08:00:00 | 2026-10-19T16:00:00 | 184.0 | 0.0 |  |  |
| A1530 | Floor finishes | 4 | standard | task | 24.0 | none | not_started | 0.0 | 2026-09-17T08:00:00 | 2026-09-21T16:00:00 | 2026-10-20T08:00:00 | 2026-10-22T16:00:00 | 184.0 | 0.0 |  |  |
| A1600 | External drainage connections and paths | 5 | standard | task | 48.0 | none | not_started | 0.0 | 2026-07-08T08:00:00 | 2026-07-15T16:00:00 | 2026-10-05T08:00:00 | 2026-10-12T16:00:00 | 496.0 | 0.0 |  |  |
| A1610 | Driveway, fencing and landscaping | 5 | standard | task | 64.0 | none | not_started | 0.0 | 2026-07-16T08:00:00 | 2026-07-27T16:00:00 | 2026-10-13T08:00:00 | 2026-10-22T16:00:00 | 496.0 | 312.0 |  |  |
| A1700 | Test and commission services | 6 | standard | task | 24.0 | none | not_started | 0.0 | 2026-08-21T08:00:00 | 2026-08-25T16:00:00 | 2026-10-20T08:00:00 | 2026-10-22T16:00:00 | 328.0 | 144.0 |  |  |
| A1710 | Building control final inspection and EPC | 6 | standard | task | 8.0 | none | not_started | 0.0 | 2026-09-22T08:00:00 | 2026-09-22T16:00:00 | 2026-10-23T08:00:00 | 2026-10-23T16:00:00 | 184.0 | 0.0 |  |  |
| A1720 | Snagging and clean | 6 | standard | task | 40.0 | none | not_started | 0.0 | 2026-09-23T08:00:00 | 2026-09-29T16:00:00 | 2026-10-26T08:00:00 | 2026-10-30T16:00:00 | 184.0 | 0.0 |  |  |
| A1730 | Practical completion | 6 | standard | finish_milestone | 0.0 | none | not_started | 0.0 | 2026-09-29T16:00:00 | 2026-09-29T16:00:00 | 2026-10-30T16:00:00 | 2026-10-30T16:00:00 | 184.0 | 184.0 |  |  |

Links (predecessor_id, successor_id, type, lag_hours):
- A1000 A1010 FS 0.0
- A1000 A1020 FS 0.0
- A1010 A1030 FS 0.0
- A1030 A1100 FS 0.0
- A1100 A1110 FS 0.0
- A1110 A1120 FS 0.0
- A1120 A1130 FS 0.0
- A1130 A1140 FS 0.0
- A1030 A1150 FS 0.0
- A1020 A1150 FS 0.0
- A1140 A1160 FS 0.0
- A1150 A1160 FS 0.0
- A1160 A1170 FS 0.0
- A1170 A1200 FS 0.0
- A1200 A1210 FS 0.0
- A1210 A1220 FS 0.0
- A1220 A1230 FS 0.0
- A1230 A1240 FS 0.0
- A1240 A1250 FS 0.0
- A1250 A1260 FS 0.0
- A1260 A1270 FS 0.0
- A1240 A1280 FS 0.0
- A1260 A1290 FS 0.0
- A1280 A1290 FS 0.0
- A1270 A1300 FS 0.0
- A1280 A1300 FS 0.0
- A1290 A1400 FS 0.0
- A1400 A1410 SS 24.0
- A1400 A1420 SS 24.0
- A1400 A1430 FS 0.0
- A1410 A1430 FS 0.0
- A1420 A1430 FS 0.0
- A1430 A1440 FS 0.0
- A1440 A1450 FS 0.0
- A1440 A1460 FS 0.0
- A1450 A1470 FS 0.0
- A1460 A1470 FS 0.0
- A1470 A1480 SS 16.0
- A1470 A1490 SS 16.0
- A1470 A1500 FS 0.0
- A1490 A1500 FF 0.0
- A1490 A1510 FS 0.0
- A1500 A1510 FS 0.0
- A1480 A1520 FS 0.0
- A1510 A1520 FS 0.0
- A1520 A1530 FS 0.0
- A1300 A1600 FS 0.0
- A1600 A1610 FS 0.0
- A1480 A1700 FS 0.0
- A1490 A1700 FS 0.0
- A1530 A1710 FS 0.0
- A1700 A1710 FS 0.0
- A1610 A1710 FS 0.0
- A1710 A1720 FS 0.0
- A1720 A1730 FS 0.0
